# SWARM EX COMMs

Schedule from GanttProject, 2026-09-09 to 2026-11-02.

## Calendars

- Project calendar: Mon-Fri working; Sat-Sun off.

## Schedule

| ID | WBS | Task | Duration | Start | Finish | Predecessors |
| --- | --- | --- | --- | --- | --- | --- |
| 1 | 1 | **Gpredict** | 26d | 2026-09-09 | 2026-10-14 |  |
| 2 | 1.1 | Create motor test plan | 4d | 2026-09-09 | 2026-09-14 |  |
| 3 | 1.2 | Checking remaining things to raise antenna | 3d | 2026-09-15 | 2026-09-17 | 2 |
| 4 | 1.3 | Executin motor tests | 7d | 2026-09-18 | 2026-09-28 | 3 |
| 5 | 1.4 | Raising antenna | 4d | 2026-09-29 | 2026-10-02 | 4 |
| 6 | 1.5 | finding exact location of ground station | 4d | 2026-09-16 | 2026-09-21 |  |
| 7 | 1.6 | g predict tracking with TLEs | 5d | 2026-09-22 | 2026-09-28 | 6 |
| 8 | 1.7 | interface gnu with g predict | 5d | 2026-09-29 | 2026-10-05 | 7 |
| 9 | 1.8 | testing sat tracking | 7d | 2026-10-06 | 2026-10-14 | 5, 8 |
| 10 | 2 | **Hydra Lithium Communication** | 13d | 2026-09-16 | 2026-10-02 |  |
| 11 | 2.1 | MCT: Review test docs | 1d | 2026-09-16 | 2026-09-16 |  |
| 12 | 2.2 | MCT: Bench setup | 2d | 2026-09-17 | 2026-09-18 | 11 |
| 13 | 2.3 | MCT: Practice run-through of test | 1d | 2026-09-21 | 2026-09-21 | 12 |
| 14 | 2.4 | MCT: Full run through of test | 2d | 2026-09-22 | 2026-09-23 | 13 |
| 15 | 2.5 | MCT: Troubleshooting | 1d | 2026-09-24 | 2026-09-24 | 14 |
| 16 | 2.6 | SCT-1: Review test docs | 1d | 2026-09-25 | 2026-09-25 | 15 |
| 17 | 2.7 | SCT-1: Bench setup | 1d | 2026-09-28 | 2026-09-28 | 16 |
| 18 | 2.8 | SCT-1: Practice run-through of test | 1d | 2026-09-29 | 2026-09-29 | 17 |
| 19 | 2.9 | SCT-1: Full run through of test | 2d | 2026-09-30 | 2026-10-01 | 18 |
| 20 | 2.10 | SCT-1: Troubleshooting | 1d | 2026-10-02 | 2026-10-02 | 19 |
| 21 | 3 | **Ground Station PC Architecture** | 20d | 2026-09-10 | 2026-10-07 |  |
| 22 | 3.1 | Transferring HFSS to new 443 machine | 4d | 2026-09-10 | 2026-09-15 |  |
| 23 | 3.2 | Setting up laptop for GND station | 3d | 2026-09-16 | 2026-09-18 | 22 |
| 24 | 3.3 | Connecting laptop and 443 machine | 3d | 2026-09-21 | 2026-09-23 | 23 |
| 25 | 3.4 | Verify ground station arch with current setup | 3d | 2026-09-24 | 2026-09-28 | 24 |
| 26 | 3.5 | Planning final GND station architecture | 7d | 2026-09-29 | 2026-10-07 | 25 |

| ID | WBS | Task | Duration | Start | Finish | Predecessors |
| --- | --- | --- | --- | --- | --- | --- |
| 27 | 4 | **Running SCT-2** | 21d | 2026-10-05 | 2026-11-02 |  |
| 28 | 4.1 | Review SCT2 procedure | 2d | 2026-10-05 | 2026-10-06 |  |
| 29 | 4.2 | Reverify Hydra-Li Comms | 3d | 2026-10-07 | 2026-10-09 | 28 |
| 30 | 4.3 | Reverify GND station setup | 3d | 2026-10-12 | 2026-10-14 | 29 |
| 31 | 4.4 | Bench setup | 2d | 2026-10-15 | 2026-10-16 | 30 |
| 32 | 4.5 | Practice run-through of SCT-2 | 2d | 2026-10-19 | 2026-10-20 | 31 |
| 33 | 4.6 | Full SCT2 runthrough | 4d | 2026-10-21 | 2026-10-26 | 32 |
| 34 | 4.7 | Testing and troubleshooting | 3d | 2026-10-27 | 2026-10-29 | 33 |
| 35 | 4.8 | Post-test documentation review | 2d | 2026-10-30 | 2026-11-02 | 34 |
